# MNO01 - versie 1

How a schedule from MS Project changed from version to version. A marks actual dates.

## Version 1 (saved 2019-10-23, file MNO01 - versie 1.mpp)

| ID | WBS | Task | Duration | Start | Finish | Predecessors | Total float |
| --- | --- | --- | --- | --- | --- | --- | --- |
| 1 | 1 | **Analysefase** | 12d | 2019-11-05 | 2019-11-21 |  | 1d |
| 2 |  | Bespreking van de opdracht | 5d | 2019-11-05 | 2019-11-12 |  | 1d |
| 3 |  | Uitschrijven van user requirements | 2d | 2019-11-13 | 2019-11-14 | 2 | 1d |
| 4 |  | Analyse architectuur | 3d | 2019-11-15 | 2019-11-19 | 3 | 1d |
| 5 |  | Opstellen van mock-up's | 4d | 2019-11-15 | 2019-11-20 | 3 | 2d |
| 6 |  | Prototypes aanmaken | 5d | 2019-11-15 | 2019-11-21 | 3 | 1d |
| 7 |  | Einde analysefase | 0d | 2019-11-21 | 2019-11-21 | 6, 4, 5 | 1d |
| 8 | 2 | **Ontwikkeling feature A** | 9d | 2019-11-22 | 2019-12-04 |  | 0d |
| 9 |  | Voorbereiding releaseplanning A | 2d | 2019-11-22 | 2019-11-25 | 7 | 7d |
| 10 |  | Uitwerken van testcases A | 4d | 2019-11-25 | 2019-11-28 | 7 | 0d |
| 11 |  | Ontwikkeling software A | 5d | 2019-11-22 | 2019-11-28 | 7 | 2d |
| 12 |  | Testen van feature A | 2d | 2019-11-29 | 2019-12-02 | 10 | 0d |
| 13 |  | Bugfixen feature A | 2d | 2019-12-03 | 2019-12-04 | 12, 11 | 0d |
| 14 |  | Einde ontwikkeling feature A | 0d | 2019-12-04 | 2019-12-04 | 13, 9 | 0d |
| 15 | 3 | **Ontwikkeling feature B** | 10d | 2019-12-05 | 2019-12-18 |  | 0d |
| 16 |  | Voorbereiden releaseplanning B | 1.5d | 2019-12-05 | 2019-12-06 | 14 | 8.5d |
| 17 |  | Uitwerken van testcases B | 3d | 2019-12-05 | 2019-12-09 | 14 | 0d |
| 18 |  | Ontwikkeling software B | 6d | 2019-12-05 | 2019-12-12 | 14 | 3d |
| 19 |  | Testen software B | 3d | 2019-12-13 | 2019-12-17 | 17 | 0d |
| 20 |  | Bugfixen feature B | 1d | 2019-12-18 | 2019-12-18 | 18, 19 | 0d |
| 21 |  | Einde ontwikkeling feature B | 0d | 2019-12-18 | 2019-12-18 | 20, 16 | 0d |
| 22 | 4 | **Release fase** | 7d | 2019-12-24 | 2020-01-06 |  | 0d |
| 23 |  | Integratietesten | 5d | 2019-12-24 | 2020-01-02 | 21FS+3d | 0d |
| 24 |  | Release naar productie | 2d | 2020-01-03 | 2020-01-06 | 23 | 0d |
| 25 |  | Einde release fase | 0d | 2020-01-06 | 2020-01-06 | 24 | 0d |

## Version 2 (data date 2019-11-19, saved 2019-10-23, file MNO01 - versie 2.mpp)

Last finish stays 2020-01-06. Complete tasks 0 → 3.

Changed:

| ID | Task | Start | Finish | Complete | Total float |
| --- | --- | --- | --- | --- | --- |
| 1 | **Analysefase** | 2019-11-05 A |  | 0% → 84% |  |
| 2 | Bespreking van de opdracht | 2019-11-05 A | 2019-11-12 A | 0% → 100% | 1d → none |
| 3 | Uitschrijven van user requirements | 2019-11-13 A | 2019-11-14 A | 0% → 100% | 1d → none |
| 4 | Analyse architectuur | 2019-11-15 A | 2019-11-19 A | 0% → 100% | 1d → none |
| 5 | Opstellen van mock-up's | 2019-11-15 A |  | 0% → 75% |  |
| 6 | Prototypes aanmaken | 2019-11-15 A |  | 0% → 60% |  |

## Version 3 (data date 2019-11-19, saved 2019-10-23, file MNO01 - versie 3.mpp)

Last finish 2020-01-06 → 2020-01-08 (+2d).

Changed:

| ID | Task | Start | Finish | Duration |
| --- | --- | --- | --- | --- |
| 22 | **Release fase** |  | 2020-01-06 → 2020-01-08 (+2d) | 7d → 9d |
| 23 | Integratietesten |  | 2020-01-02 → 2020-01-06 (+4d) | 5d → 7d |
| 24 | Release naar productie | 2020-01-03 → 2020-01-07 (+4d) | 2020-01-06 → 2020-01-08 (+2d) |  |
| 25 | Einde release fase | 2020-01-06 → 2020-01-08 (+2d) | 2020-01-06 → 2020-01-08 (+2d) |  |
